# Cronograma SISPPAFUT

Schedule from MS Project, 2012-03-19 to 2012-11-29, A marks actual dates.

## Calendars

- Calendario SISPPAFUT: Mon-Fri 09:00-13:00, 15:00-19:00; Sat-Sun off. Exceptions (off unless hours are given): 2012-03-21 to 2012-12-07 (recurring), 2012-05-07 to 2012-05-11, 2012-07-02 to 2012-08-17, 2012-10-08 to 2012-10-12.

## Resources

| Resource |
| --- |
| Michael Martínez |
| Rodolfo Cordero |
| Analista QA |
| Renzo Martínez |

## Schedule

| ID | WBS | Task | Type | Duration | Start | Finish | Predecessors | Complete | Remaining | Total slack | Constraint | Resources | Work | Actual work |
| --- | --- | --- | --- | --- | --- | --- | --- | --- | --- | --- | --- | --- | --- | --- |
| 1 | 1 | **Sistema Inteligente para Pronósticos de Partidos de Fútbol** |  | 84d | 2012-03-19 A | 2012-11-29 |  | 49% | 42.93d | 0d |  |  | 688.8h | 336.8h |
| 2 | 1.1 | **Planificación** |  | 1d | 2012-03-19 A | 2012-03-19 A |  | 100% |  |  |  |  | 8h | 8h |
| 3 | 1.1.1 | Elaboraración del Glosario |  | 1d | 2012-03-19 A | 2012-03-19 A |  | 100% |  |  |  | Michael Martínez | 8h | 8h |
| 4 | 1.2 | **Product Backlog** |  | 0.6d | 2012-03-20 A | 2012-03-20 A |  | 100% |  |  |  |  | 4.8h | 4.8h |
| 5 | 1.2.1 | Creación de User Stories |  | 0.5d | 2012-03-20 A | 2012-03-20 A | 3 | 100% |  |  | start no earlier than 2012-03-20 | Michael Martínez | 4h | 4h |
| 6 | 1.2.2 | Priorización de User Stories |  | 0.1d | 2012-03-20 A | 2012-03-20 A | 5 | 100% |  |  | start no earlier than 2012-03-20 | Michael Martínez | 0.8h | 0.8h |
| 7 | 1.3 | **Planificación de los Sprints** |  | 0.4d | 2012-03-20 A | 2012-03-20 A |  | 100% |  |  |  |  | 3.2h | 3.2h |
| 8 | 1.3.1 | Determinar Sprints |  | 0.1d | 2012-03-20 A | 2012-03-20 A | 6 | 100% |  |  |  | Michael Martínez | 0.8h | 0.8h |
| 9 | 1.3.2 | Determinar los Sprints Backlog |  | 0.1d | 2012-03-20 A | 2012-03-20 A | 8 | 100% |  |  | start no earlier than 2012-03-20 | Michael Martínez | 0.8h | 0.8h |
| 10 | 1.3.3 | Determinar duración de cada Sprint |  | 0.1d | 2012-03-20 A | 2012-03-20 A | 9 | 100% |  |  |  | Michael Martínez | 0.8h | 0.8h |
| 11 | 1.3.4 | Determinar Releases |  | 0.1d | 2012-03-20 A | 2012-03-20 A | 10 | 100% |  |  |  | Michael Martínez | 0.8h | 0.8h |
| 12 | 1.4 | **Construcción** |  | 30.7d | 2012-03-26 A | 2012-06-11 A |  | 100% |  |  |  |  | 280.8h | 280.8h |
| 13 | 1.4.1 | **Sprint 1** |  | 11d | 2012-03-26 A | 2012-04-17 A |  | 100% |  |  |  |  | 65.6h | 65.6h |
| 14 | 1.4.1.1 | US001 |  | 1d | 2012-03-26 A | 2012-03-26 A | 11 | 100% |  |  | start no earlier than 2012-03-26 | Renzo Martínez | 8h | 8h |
| 15 | 1.4.1.2 | US004 |  | 1d | 2012-03-27 A | 2012-03-27 A | 14 | 100% |  |  |  | Renzo Martínez | 8h | 8h |
| 16 | 1.4.1.3 | US007 |  | 1d | 2012-03-29 A | 2012-03-29 A | 15 | 100% |  |  |  | Renzo Martínez | 8h | 8h |
| 17 | 1.4.1.4 | US009 |  | 1d | 2012-04-02 A | 2012-04-02 A | 16 | 100% |  |  |  | Rodolfo Cordero | 8h | 8h |
| 18 | 1.4.1.5 | US014 |  | 1d | 2012-04-03 A | 2012-04-03 A | 17 | 100% |  |  |  | Rodolfo Cordero | 8h | 8h |
| 19 | 1.4.1.6 | US017 |  | 1d | 2012-04-05 A | 2012-04-05 A | 18 | 100% |  |  |  | Rodolfo Cordero | 8h | 8h |
| 20 | 1.4.1.7 | Revisión por pares |  | 1d | 2012-04-09 A | 2012-04-09 A | 19 | 100% |  |  |  | Michael Martínez | 8h | 8h |
| 21 | 1.4.1.8 | Ejecución de integración |  | 0.2d | 2012-04-10 A | 2012-04-10 A | 20 | 100% |  |  | start no earlier than 2012-04-19 | Michael Martínez | 1.6h | 1.6h |
| 22 | 1.4.1.9 | Envío de Sprint 1 a QA | milestone | 0d | 2012-04-10 A | 2012-04-10 A | 21 | 100% |  |  |  | Michael Martínez |  |  |
| 23 | 1.4.1.10 | Recepción de observaciones por QA | milestone | 0d | 2012-04-17 A | 2012-04-17 A | 22 | 100% |  |  | start no earlier than 2012-04-17 | Analista QA |  |  |
| 24 | 1.4.1.11 | Corrección de observaciones |  | 1d | 2012-04-17 A | 2012-04-17 A | 23 | 100% |  |  |  | Michael Martínez | 8h | 8h |

| ID | WBS | Task | Type | Duration | Start | Finish | Predecessors | Complete | Constraint | Resources | Work | Actual work |
| --- | --- | --- | --- | --- | --- | --- | --- | --- | --- | --- | --- | --- |
| 25 | 1.4.2 | **Sprint 2** |  | 13d | 2012-04-09 A | 2012-05-14 A |  | 100% |  |  | 89.6h | 89.6h |
| 26 | 1.4.2.1 | US002 |  | 1d | 2012-04-09 A | 2012-04-09 A | 19 | 100% |  | Rodolfo Cordero | 8h | 8h |
| 27 | 1.4.2.2 | US005 |  | 1d | 2012-04-10 A | 2012-04-10 A | 26 | 100% |  | Renzo Martínez | 8h | 8h |
| 28 | 1.4.2.3 | US011 |  | 1d | 2012-04-12 A | 2012-04-12 A | 27 | 100% |  | Rodolfo Cordero | 8h | 8h |
| 29 | 1.4.2.4 | US015 |  | 1.5d | 2012-04-16 A | 2012-04-17 A | 28 | 100% |  | Rodolfo Cordero | 12h | 12h |
| 30 | 1.4.2.5 | US018 |  | 1.5d | 2012-04-17 A | 2012-04-19 A | 29 | 100% |  | Rodolfo Cordero | 12h | 12h |
| 31 | 1.4.2.6 | US020 |  | 1.5d | 2012-04-23 A | 2012-04-24 A | 30 | 100% |  | Renzo Martínez | 12h | 12h |
| 32 | 1.4.2.7 | US026 |  | 1.5d | 2012-04-24 A | 2012-04-26 A | 31 | 100% |  | Renzo Martínez | 12h | 12h |
| 33 | 1.4.2.8 | Revisión por pares |  | 1d | 2012-04-30 A | 2012-04-30 A | 32 | 100% |  | Michael Martínez | 8h | 8h |
| 34 | 1.4.2.9 | Ejecución de integración |  | 0.2d | 2012-05-01 A | 2012-05-01 A | 33 | 100% |  | Michael Martínez | 1.6h | 1.6h |
| 35 | 1.4.2.10 | Envío de Sprint 2 a QA | milestone | 0d | 2012-05-01 A | 2012-05-01 A | 34 | 100% |  | Michael Martínez |  |  |
| 36 | 1.4.2.11 | Recepción de observaciones por QA | milestone | 0d | 2012-05-14 A | 2012-05-14 A | 35 | 100% | start no earlier than 2012-05-14 | Analista QA |  |  |
| 37 | 1.4.2.12 | Corrección de observaciones |  | 1d | 2012-05-14 A | 2012-05-14 A | 36 | 100% |  | Michael Martínez | 8h | 8h |
| 38 | 1.4.3 | **Sprint 3** |  | 15.7d | 2012-04-30 A | 2012-06-11 A |  | 100% |  |  | 125.6h | 125.6h |
| 39 | 1.4.3.1 | US008 |  | 0.5d | 2012-04-30 A | 2012-04-30 A | 32 | 100% |  | Rodolfo Cordero | 4h | 4h |
| 40 | 1.4.3.2 | US012 |  | 0.5d | 2012-04-30 A | 2012-04-30 A | 39 | 100% |  | Rodolfo Cordero | 4h | 4h |
| 41 | 1.4.3.3 | US049 |  | 1d | 2012-05-01 A | 2012-05-01 A | 40 | 100% |  | Renzo Martínez | 8h | 8h |
| 42 | 1.4.3.4 | US021 |  | 0.5d | 2012-05-03 A | 2012-05-03 A | 41 | 100% |  | Renzo Martínez | 4h | 4h |
| 43 | 1.4.3.5 | US028 |  | 1d | 2012-05-03 A | 2012-05-14 A | 42 | 100% |  | Renzo Martínez | 8h | 8h |
| 44 | 1.4.3.6 | US029 |  | 1d | 2012-05-14 A | 2012-05-15 A | 43 | 100% |  | Renzo Martínez | 8h | 8h |
| 45 | 1.4.3.7 | US030 |  | 1d | 2012-05-15 A | 2012-05-17 A | 44 | 100% |  | Renzo Martínez | 8h | 8h |
| 46 | 1.4.3.8 | US032 |  | 1d | 2012-05-17 A | 2012-05-21 A | 45 | 100% |  | Renzo Martínez | 8h | 8h |
| 47 | 1.4.3.9 | US033 |  | 1d | 2012-05-21 A | 2012-05-22 A | 46 | 100% |  | Rodolfo Cordero | 8h | 8h |
| 48 | 1.4.3.10 | US050 |  | 1d | 2012-05-22 A | 2012-05-24 A | 47 | 100% |  | Renzo Martínez | 8h | 8h |
| 49 | 1.4.3.11 | US013 |  | 1d | 2012-05-24 A | 2012-05-28 A | 48 | 100% |  | Rodolfo Cordero | 8h | 8h |
| 50 | 1.4.3.12 | US022 |  | 1d | 2012-05-28 A | 2012-05-29 A | 49 | 100% |  | Rodolfo Cordero | 8h | 8h |
| 51 | 1.4.3.13 | US027 |  | 1d | 2012-05-29 A | 2012-05-31 A | 50 | 100% |  | Rodolfo Cordero | 8h | 8h |
| 52 | 1.4.3.14 | US010 |  | 1d | 2012-05-31 A | 2012-06-04 A | 51 | 100% |  | Rodolfo Cordero | 8h | 8h |
| 53 | 1.4.3.15 | Revisión por pares |  | 2d | 2012-06-04 A | 2012-06-07 A | 52 | 100% |  | Michael Martínez | 16h | 16h |
| 54 | 1.4.3.16 | Ejecución de integración |  | 0.2d | 2012-06-07 A | 2012-06-07 A | 53 | 100% |  | Michael Martínez | 1.6h | 1.6h |
| 55 | 1.4.3.17 | Envío de Sprint 3 a QA | milestone | 0d | 2012-06-07 A | 2012-06-07 A | 54 | 100% |  | Michael Martínez |  |  |
| 56 | 1.4.3.18 | Recepción de observaciones por QA | milestone | 0d | 2012-06-07 A | 2012-06-07 A | 55 | 100% | start no earlier than 2012-06-05 | Analista QA |  |  |
| 57 | 1.4.3.19 | Corrección de observaciones |  | 1d | 2012-06-07 A | 2012-06-11 A | 56 | 100% |  | Michael Martínez | 8h | 8h |

| ID | WBS | Task | Type | Duration | Start | Finish | Predecessors | Complete | Remaining | Total slack | Free slack | Constraint | Resources | Work | Actual work |
| --- | --- | --- | --- | --- | --- | --- | --- | --- | --- | --- | --- | --- | --- | --- | --- |
| 58 | 1.5 | **Diseño de la Red Neuronal** |  | 4d | 2012-06-11 A | 2012-06-19 |  | 75% | 1d | 46.3d |  |  |  | 32h | 24h |
| 59 | 1.5.1 | Análisis de las características |  | 1d | 2012-06-11 A | 2012-06-12 A | 57 | 100% |  |  |  | start no earlier than 2012-06-11 | Michael Martínez | 8h | 8h |
| 60 | 1.5.2 | Análisis de los patrones |  | 1d | 2012-06-12 A | 2012-06-14 A | 59 | 100% |  |  |  |  | Michael Martínez | 8h | 8h |
| 61 | 1.5.3 | Diseño de la RNA |  | 1d | 2012-06-14 A | 2012-06-18 A | 60 | 100% |  |  |  |  | Michael Martínez | 8h | 8h |
| 62 | 1.5.4 | Envío de la red neuronal a QA | milestone | 0d | 2012-06-18 | 2012-06-18 | 61 |  |  | 1.3d | 0d |  | Michael Martínez |  |  |
| 63 | 1.5.5 | Recepción de observaciones por QA | milestone | 0d | 2012-06-18 | 2012-06-18 | 62 |  |  | 1.3d | 0d | start no earlier than 2012-06-18 | Analista QA |  |  |
| 64 | 1.5.6 | Corrección de observaciones |  | 1d | 2012-06-18 | 2012-06-19 | 63 |  |  | 46.3d |  |  | Michael Martínez | 8h |  |
| 65 | 1.6 | Lanzamiento de Release 1 |  | 1d | 2012-06-19 A | 2012-06-21 A | 57 | 100% |  |  |  |  | Michael Martínez | 8h | 8h |
| 66 | 1.7 | Cierre parcial del Producto |  | 1d | 2012-06-21 A | 2012-06-25 A | 65 | 100% |  |  |  |  | Michael Martínez | 8h | 8h |
| 67 | 1.8 | Presentación Parcial del Taller de Proyecto 1 |  | 1d | 2012-06-25 | 2012-06-26 | 66 |  |  | 1.3d |  |  | Michael Martínez | 8h |  |
| 68 | 1.9 | **Contrucción** |  | 27d | 2012-08-20 | 2012-10-25 |  |  |  | 0d |  |  |  | 216h |  |
| 69 | 1.9.1 | Sprint 4 |  | 9d | 2012-08-20 | 2012-09-06 | 67 |  |  | 0d |  | start no earlier than 2012-08-20 | Michael Martínez | 72h |  |
| 70 | 1.9.2 | Sprint 5 |  | 9d | 2012-09-10 | 2012-09-27 | 69 |  |  | 0d |  |  | Michael Martínez | 72h |  |
| 71 | 1.9.3 | Sprint 6 |  | 9d | 2012-10-01 | 2012-10-25 | 70 |  |  | 0d |  |  | Michael Martínez | 72h |  |
| 72 | 1.10 | **Entrenamiento** |  | 11d | 2012-10-29 | 2012-11-20 |  |  |  | 0d |  |  |  | 88h |  |
| 73 | 1.10.1 | Implementación del módulo de entrenamiento |  | 2d | 2012-10-29 | 2012-10-30 | 71 |  |  | 0d |  |  | Michael Martínez | 16h |  |
| 74 | 1.10.2 | Entrenamiento del Sistema |  | 9d | 2012-11-01 | 2012-11-20 | 73 |  |  | 0d |  |  | Michael Martínez | 72h |  |
| 75 | 1.11 | **Pruebas de Sistemas Expertos** |  | 1d | 2012-11-22 | 2012-11-22 |  |  |  | 0d |  |  |  | 8h |  |
| 76 | 1.11.1 | Validación y verificación de Sistemas Expertos |  | 1d | 2012-11-22 | 2012-11-22 | 74 |  |  | 0d |  |  | Michael Martínez | 8h |  |
| 77 | 1.12 | Lanzamiento de Release 2 |  | 1d | 2012-11-26 | 2012-11-26 | 76 |  |  | 0d |  |  | Michael Martínez | 8h |  |
| 78 | 1.13 | Cierre final del Producto |  | 1d | 2012-11-27 | 2012-11-27 | 77 |  |  | 0d |  |  | Michael Martínez | 8h |  |
| 79 | 1.14 | Presentación Final del Taller de Proyecto 2 |  | 1d | 2012-11-29 | 2012-11-29 | 78 |  |  | 0d |  |  | Michael Martínez | 8h |  |
